# Bouwplanning v1.0

Schedule from an IFC model, 2027-03-01 to 2027-12-17.
Parkeergarage Stationsplein Utrecht

## Schedule

| ID | Activity | Type | Duration | Start | Finish | Predecessors | Planned start | Planned finish | Total float | Free float |
| --- | --- | --- | --- | --- | --- | --- | --- | --- | --- | --- |
| 1 | **1. Voorbereiding** |  | 5d | 2027-03-01 | 2027-04-05 |  | 2027-03-01 | 2027-03-05 | 0d |  |
| 1.1 | Kabels en leidingen verleggen |  | 10d | 2027-03-01 | 2027-03-12 |  |  |  | 0d |  |
| 1.2 | Bouwplaats inrichten |  | 5d | 2027-03-15 | 2027-03-19 | 1.1 | 2027-03-01 | 2027-03-05 | 165d | 0d |
| 1.3 | Monitoring omgeving |  | 3d | 2027-03-22 | 2027-03-24 | 1.2 | 2027-03-01 | 2027-03-03 | 165d | 0d |
| 1.4 | Verkeersmaatregelen |  | 5d | 2027-03-25 | 2027-04-02 | 1.3 | 2027-03-01 | 2027-03-05 | 165d | 0d |
| 1.5 | Start bouw | milestone | 0d | 2027-04-05 | 2027-04-05 | 1.4 | 2027-03-01 | 2027-03-01 | 165d |  |
| 2 | **2. Bouwkuip** |  | 5d | 2027-03-17 | 2027-08-16 |  | 2027-03-01 | 2027-03-05 | 0d |  |
| 2.1 | Diepwanden uitvoeren |  | 20d | 2027-03-17 | 2027-04-15 | 1.1 SS+12d | 2027-03-01 | 2027-03-26 | 0d |  |
| 2.2 | Stempels niveau 1 |  | 8d | 2027-04-16 | 2027-04-28 | 2.1 | 2027-03-01 | 2027-03-10 | 89d | 0d |
| 2.3 | Ontgraven laag 1 |  | 10d | 2027-04-29 | 2027-05-14 | 2.2 | 2027-03-01 | 2027-03-12 | 89d | 0d |
| 2.4 | Stempels niveau 2 |  | 8d | 2027-05-18 | 2027-05-27 | 2.3 | 2027-03-01 | 2027-03-10 | 89d | 0d |
| 2.5 | Ontgraven laag 2 |  | 10d | 2027-05-28 | 2027-06-10 | 2.4 | 2027-03-01 | 2027-03-12 | 89d | 0d |
| 2.6 | Stempels niveau 3 |  | 8d | 2027-06-11 | 2027-06-22 | 2.5 | 2027-03-01 | 2027-03-10 | 89d | 0d |
| 2.7 | Ontgraven laag 3 |  | 10d | 2027-06-23 | 2027-07-06 | 2.6 | 2027-03-01 | 2027-03-12 | 89d | 0d |
| 2.8 | Onderwaterbeton vloer |  | 8d | 2027-07-07 | 2027-07-16 | 2.7 | 2027-03-01 | 2027-03-10 | 89d | 0d |
| 2.9 | Droogpompen |  | 5d | 2027-07-19 | 2027-07-23 | 2.8 | 2027-03-01 | 2027-03-05 | 89d | 0d |
| 2.10 | Bouwkuip droog | milestone | 0d | 2027-08-16 | 2027-08-16 | 2.9 | 2027-03-01 | 2027-03-01 | 89d |  |
| 3 | **3. Betonconstructie** |  | 5d | 2027-03-31 | 2027-08-20 |  | 2027-03-01 | 2027-03-05 | 0d |  |
| 3.1 | Vloer niveau -3 |  | 10d | 2027-03-31 | 2027-04-13 | 2.1 SS | 2027-03-01 | 2027-03-12 | 0d |  |
| 3.2 | Kolommen en wanden -3 |  | 8d | 2027-04-14 | 2027-04-23 | 3.1 | 2027-03-01 | 2027-03-10 | 0d |  |
| 3.3 | Vloer niveau -2 |  | 10d | 2027-04-26 | 2027-05-12 | 3.2 | 2027-03-01 | 2027-03-12 | 0d |  |
| 3.4 | Kolommen en wanden -2 |  | 8d | 2027-05-13 | 2027-05-25 | 3.3 | 2027-03-01 | 2027-03-10 | 0d |  |
| 3.5 | Vloer niveau -1 |  | 10d | 2027-05-26 | 2027-06-08 | 3.4 | 2027-03-01 | 2027-03-12 | 0d |  |
| 3.6 | Kolommen en wanden -1 |  | 8d | 2027-06-09 | 2027-06-18 | 3.5 | 2027-03-01 | 2027-03-10 | 0d |  |
| 3.7 | Dek parkeergarage |  | 12d | 2027-06-21 | 2027-07-06 | 3.6 | 2027-03-01 | 2027-03-16 | 0d |  |
| 3.8 | Stempels verwijderen |  | 8d | 2027-07-07 | 2027-07-16 | 3.7 | 2027-03-01 | 2027-03-10 | 0d |  |
| 3.9 | Waterdichting |  | 10d | 2027-07-19 | 2027-08-20 | 3.8 | 2027-03-01 | 2027-03-12 | 0d |  |

| ID | Activity | Type | Duration | Start | Finish | Predecessors | Planned start | Planned finish | Total float |
| --- | --- | --- | --- | --- | --- | --- | --- | --- | --- |
| 4 | **4. Installaties** |  | 5d | 2027-07-08 | 2027-10-18 |  | 2027-03-01 | 2027-03-05 | 0d |
| 4.1 | Elektra hoofdverdeling |  | 8d | 2027-07-08 | 2027-07-19 | 3.9 FS-17d | 2027-03-01 | 2027-03-10 | 0d |
| 4.2 | Verlichting parkeerlagen |  | 10d | 2027-07-20 | 2027-08-23 | 4.1 | 2027-03-01 | 2027-03-12 | 0d |
| 4.3 | Ventilatie en CO-detectie |  | 10d | 2027-08-24 | 2027-09-06 | 4.2 | 2027-03-01 | 2027-03-12 | 0d |
| 4.4 | Sprinklerinstallatie |  | 8d | 2027-09-07 | 2027-09-16 | 4.3 | 2027-03-01 | 2027-03-10 | 0d |
| 4.5 | Parkeergeleiding systeem |  | 5d | 2027-09-17 | 2027-09-23 | 4.4 | 2027-03-01 | 2027-03-05 | 0d |
| 4.6 | Liftinstallatie |  | 12d | 2027-09-24 | 2027-10-11 | 4.5 | 2027-03-01 | 2027-03-16 | 0d |
| 4.7 | Brandmeldinstallatie |  | 5d | 2027-10-12 | 2027-10-18 | 4.6, 3.9 FF+2d | 2027-03-01 | 2027-03-05 | 0d |
| 5 | **5. Afwerking** |  | 5d | 2027-10-19 | 2027-11-18 |  | 2027-03-01 | 2027-03-05 | 0d |
| 5.1 | Vloercoating aanbrengen |  | 8d | 2027-10-19 | 2027-10-28 | 4.7 | 2027-03-01 | 2027-03-10 | 0d |
| 5.2 | Belijning en bewegwijzering |  | 5d | 2027-10-29 | 2027-11-04 | 5.1 | 2027-03-01 | 2027-03-05 | 0d |
| 5.3 | Toegangscontrole slagbomen |  | 5d | 2027-11-05 | 2027-11-11 | 5.2 | 2027-03-01 | 2027-03-05 | 0d |
| 5.4 | Nooduitgangen afwerken |  | 5d | 2027-11-12 | 2027-11-18 | 5.3 | 2027-03-01 | 2027-03-05 | 0d |
| 6 | **6. Bovengronds herstel** |  | 5d | 2027-11-19 | 2027-12-17 |  | 2027-03-01 | 2027-03-05 | 0d |
| 6.1 | Plein opnieuw inrichten |  | 10d | 2027-11-19 | 2027-12-02 | 5.4 | 2027-03-01 | 2027-03-12 | 0d |
| 6.2 | Bestrating en groen |  | 8d | 2027-12-03 | 2027-12-14 | 6.1 | 2027-03-01 | 2027-03-10 | 0d |
| 6.3 | Verkeersmaatregelen opheffen |  | 3d | 2027-12-15 | 2027-12-17 | 6.2 | 2027-03-01 | 2027-03-03 | 0d |
| 6.4 | Oplevering | milestone | 0d | 2027-12-17 | 2027-12-17 | 6.3 | 2027-03-01 | 2027-03-01 | 0d |
